# Rehabilitación de Celda Robótica de Manufactura

Schedule from MS Project, 2026-09-14 to 2026-12-04, 6 hours a day.

## Calendars

- Calendario1: Mon-Fri 08:30-14:30, 21:30-22:30; Sat 09:00-17:00; Sun off. Exceptions (off unless hours are given): 2026-09-16 (Aniv. Independencia de México), 2026-11-02 (Finados Día de Muertos), 2026-11-16 (Aniv. Rev. Mex).

## Resources

| Resource |
| --- |
| Angel Ongay |

## Schedule

| ID | WBS | Task | Type | Duration | Start | Finish | Predecessors | Baseline start | Baseline finish | Baseline duration | Total slack | Resources | Work |
| --- | --- | --- | --- | --- | --- | --- | --- | --- | --- | --- | --- | --- | --- |
| 1 | 1 | Inicio | milestone | 0d | 2026-09-14 | 2026-09-14 |  | 2026-09-14 | 2026-09-14 | 0d | 0d | Angel Ongay |  |
| 2 | 2 | **Fase 0** |  | 6d | 2026-09-14 | 2026-09-19 |  |  |  |  | 75d | Angel Ongay | 72h |
| 3 | 2.1 | Investigación Previa |  | 6d | 2026-09-14 | 2026-09-19 |  |  |  |  | 75d | Angel Ongay | 36h |
| 4 | 3 | **Fase 1** |  | 29d | 2026-09-14 | 2026-10-13 |  | 2026-09-14 | 2026-10-13 | 29d | 0d | Angel Ongay | 630h |
| 5 | 3.1 | **Configuración del Entorno de Desarrollo y Simulación** |  | 6d | 2026-09-14 | 2026-09-19 |  | 2026-09-14 | 2026-09-19 | 6d | 0d | Angel Ongay | 78h |
| 6 | 3.1.1 | Puesta a Punto de la estación |  | 3d | 2026-09-14 | 2026-09-17 | 1 | 2026-09-14 | 2026-09-17 | 3d | 0d | Angel Ongay | 18h |
| 7 | 3.1.2 | Modelado y Delimitaciones |  | 3d | 2026-09-17 | 2026-09-19 | 6 | 2026-09-17 | 2026-09-19 | 3d | 23d | Angel Ongay | 18h |
| 8 | 3.1.3 | Configuración de Comunicación |  | 1d | 2026-09-17 | 2026-09-18 | 6 | 2026-09-17 | 2026-09-18 | 1d | 0d | Angel Ongay | 6h |
| 9 | 3.2 | **Prototipado Lógico de Secuencias por Manipulador** |  | 13d | 2026-09-18 | 2026-10-01 | 8 | 2026-09-18 | 2026-10-01 | 13d | 0d | Angel Ongay | 234h |
| 10 | 3.2.1 | **Robot1** |  | 7d | 2026-09-18 | 2026-09-25 |  | 2026-09-18 | 2026-09-25 | 7d | 0d | Angel Ongay | 84h |
| 11 | 3.2.1.1 | DePaletizado |  | 4d | 2026-09-18 | 2026-09-22 |  |  |  |  | 21d |  |  |
| 12 | 3.2.1.2 | Ajuste |  | 3d | 2026-09-18 | 2026-09-21 |  | 2026-09-18 | 2026-09-21 | 3d | 0d | Angel Ongay | 18h |
| 13 | 3.2.1.3 | Corte |  | 2d | 2026-09-21 | 2026-09-23 | 12 | 2026-09-21 | 2026-09-23 | 2d | 0d | Angel Ongay | 12h |
| 14 | 3.2.1.4 | Afilado |  | 1d | 2026-09-23 | 2026-09-24 | 13 | 2026-09-23 | 2026-09-24 | 1d | 0d | Angel Ongay | 6h |
| 15 | 3.2.1.5 | Depositarla |  | 1d | 2026-09-24 | 2026-09-25 | 14 | 2026-09-24 | 2026-09-25 | 1d | 0d | Angel Ongay | 6h |
| 16 | 3.2.2 | **Robot2** |  | 6d | 2026-09-25 | 2026-10-01 |  | 2026-09-25 | 2026-10-01 | 6d | 0d | Angel Ongay | 72h |
| 17 | 3.2.2.1 | Preparación |  | 1d | 2026-09-25 | 2026-09-26 | 15 | 2026-09-25 | 2026-09-26 | 1d | 0d | Angel Ongay | 6h |
| 18 | 3.2.2.2 | Crimpado |  | 1d | 2026-09-26 | 2026-09-26 | 17 | 2026-09-26 | 2026-09-26 | 1d | 0d | Angel Ongay | 6h |
| 19 | 3.2.2.3 | Paletizado |  | 4d | 2026-09-26 | 2026-10-01 | 18 | 2026-09-26 | 2026-10-01 | 4d | 0d | Angel Ongay | 24h |
| 20 | 3.3 | **Arquitectura de Software Base en SPEL+** |  | 12d | 2026-10-01 | 2026-10-13 |  | 2026-10-01 | 2026-10-13 | 12d | 0d | Angel Ongay | 144h |
| 21 | 3.3.1 | Estructuración de Código |  | 4d | 2026-10-01 | 2026-10-05 | 19 | 2026-10-01 | 2026-10-05 | 4d | 0d | Angel Ongay | 24h |
| 22 | 3.3.2 | Rutinas genéricas |  | 4d | 2026-10-05 | 2026-10-08 | 21 | 2026-10-05 | 2026-10-08 | 4d | 0d | Angel Ongay | 24h |
| 23 | 3.3.3 | Subrutinas de Seguridad |  | 4d | 2026-10-09 | 2026-10-13 | 22 | 2026-10-09 | 2026-10-13 | 4d | 0d | Angel Ongay | 24h |
| 24 | 4 | Acceso a Planta | milestone | 0d | 2026-10-13 | 2026-10-13 | 4 | 2026-10-13 | 2026-10-13 | 0d | 0d | Angel Ongay |  |

| ID | WBS | Task | Duration | Start | Finish | Predecessors | Baseline start | Baseline finish | Baseline duration | Total slack | Resources | Work |
| --- | --- | --- | --- | --- | --- | --- | --- | --- | --- | --- | --- | --- |
| 25 | 5 | **Fase 2** | 12d | 2026-10-13 | 2026-10-24 | 24, 4 | 2026-10-13 | 2026-10-24 | 12d | 0d | Angel Ongay | 276h |
| 26 | 5.1 | **Levantamiento Técnico** | 2d | 2026-10-13 | 2026-10-14 |  | 2026-10-13 | 2026-10-14 | 2d | 0d | Angel Ongay | 36h |
| 27 | 5.1.1 | Registro fotográfico | 1d | 2026-10-13 | 2026-10-14 |  | 2026-10-13 | 2026-10-14 | 1d | 0d | Angel Ongay | 6h |
| 28 | 5.1.2 | Levantamiento de placas de datos | 1d | 2026-10-14 | 2026-10-14 | 27 | 2026-10-14 | 2026-10-14 | 1d | 0d | Angel Ongay | 6h |
| 29 | 5.1.3 | Inspección de placas de controladores Epson | 1d | 2026-10-14 | 2026-10-14 | 27 | 2026-10-14 | 2026-10-14 | 1d | 4d | Angel Ongay | 6h |
| 30 | 5.1.4 | Inventario detallado | 1d | 2026-10-14 | 2026-10-14 | 27 | 2026-10-14 | 2026-10-14 | 1d | 4d | Angel Ongay | 6h |
| 31 | 5.2 | **Mantenimiento de Manipuladores** | 3d | 2026-10-15 | 2026-10-17 |  | 2026-10-15 | 2026-10-17 | 3d | 0d | Angel Ongay | 42h |
| 32 | 5.2.1 | Desmontaje de cubiertas protectoras, desengrasado y limpieza | 2d | 2026-10-15 | 2026-10-16 | 28 | 2026-10-15 | 2026-10-16 | 2d | 0d | Angel Ongay | 12h |
| 33 | 5.2.2 | Lubricación de guías lineales y rodamientos | 1d | 2026-10-16 | 2026-10-17 | 32 | 2026-10-16 | 2026-10-17 | 1d | 1d | Angel Ongay | 6h |
| 34 | 5.2.3 | Reemplazo preventivo/correctivo de baterías de respaldo | 1d | 2026-10-16 | 2026-10-17 | 32 | 2026-10-16 | 2026-10-17 | 1d | 0d | Angel Ongay | 6h |
| 35 | 5.3 | **Mantenimiento Gabinete y Celda** | 1d | 2026-10-17 | 2026-10-19 |  | 2026-10-17 | 2026-10-19 | 1d | 0d | Angel Ongay | 30h |
| 36 | 5.3.1 | Limpieza química controlada y aspirado de polvo | 1d | 2026-10-17 | 2026-10-19 | 34 | 2026-10-17 | 2026-10-19 | 1d | 0d | Angel Ongay | 6h |
| 37 | 5.3.2 | Inspección y prueba operativa de ventiladores | 1d | 2026-10-17 | 2026-10-19 | 34 | 2026-10-17 | 2026-10-19 | 1d | 0d | Angel Ongay | 6h |
| 38 | 5.3.3 | Verificación de apriete en bornes de clemas de fuerza, tierras físicas y distribución de 24 VCD | 1d | 2026-10-17 | 2026-10-19 | 34 | 2026-10-17 | 2026-10-19 | 1d | 0d | Angel Ongay | 6h |
| 39 | 5.3.4 | Reemplazo de baterías de memoria de parámetros del controlador principal | 1d | 2026-10-17 | 2026-10-19 | 34 | 2026-10-17 | 2026-10-19 | 1d | 0d | Angel Ongay | 6h |
| 40 | 5.4 | **Levantamiento Neumático** | 2d | 2026-10-19 | 2026-10-20 | 35, 26, 31 | 2026-10-19 | 2026-10-20 | 2d | 0d | Angel Ongay | 42h |
| 41 | 5.4.1 | Inspección y purga de la unidad de mantenimiento principal | 1d | 2026-10-19 | 2026-10-20 | 35, 26, 31 | 2026-10-19 | 2026-10-20 | 1d | 5d | Angel Ongay | 6h |
| 42 | 5.4.2 | Rastreo de mangueras neumáticas, identificación de colectores | 1d | 2026-10-19 | 2026-10-20 | 35, 26, 31 | 2026-10-19 | 2026-10-20 | 1d | 5d | Angel Ongay | 6h |
| 43 | 5.4.3 | Prueba de detección de fugas en grippers y actuadores | 1d | 2026-10-19 | 2026-10-20 | 35, 26, 31 | 2026-10-19 | 2026-10-20 | 1d | 5d | Angel Ongay | 6h |
| 44 | 5.4.4 | Levantamiento e inventario | 2d | 2026-10-19 | 2026-10-20 | 35, 26, 31 | 2026-10-19 | 2026-10-20 | 2d | 0d | Angel Ongay | 12h |
| 45 | 5.5 | **Levantamiento Eléctrico** | 4d | 2026-10-21 | 2026-10-24 |  | 2026-10-21 | 2026-10-24 | 4d | 0d | Angel Ongay | 54h |
| 46 | 5.5.1 | Mapeo punto a punto de cableado | 3d | 2026-10-21 | 2026-10-23 | 44 | 2026-10-21 | 2026-10-23 | 3d | 0d | Angel Ongay | 18h |
| 47 | 5.5.2 | Identificación de lógica de señales | 1d | 2026-10-21 | 2026-10-21 | 44 | 2026-10-21 | 2026-10-21 | 1d | 2d | Angel Ongay | 6h |
| 48 | 5.5.3 | Prueba de funcionalidad de componentes | 1d | 2026-10-23 | 2026-10-24 | 47, 46 | 2026-10-23 | 2026-10-24 | 1d | 0d | Angel Ongay | 6h |

| ID | WBS | Task | Duration | Start | Finish | Predecessors | Baseline start | Baseline finish | Baseline duration | Total slack | Free slack | Resources | Work |
| --- | --- | --- | --- | --- | --- | --- | --- | --- | --- | --- | --- | --- | --- |
| 49 | 6 | **Fase 3** | 10d | 2026-10-24 | 2026-11-04 | 24, 25 | 2026-10-24 | 2026-11-04 | 10d | 0d |  | Angel Ongay | 300h |
| 50 | 6.1 | **Paquete de Planos y Esquemas de Ingeniería** | 4d | 2026-10-24 | 2026-10-28 |  | 2026-10-24 | 2026-10-28 | 4d | 1d |  | Angel Ongay | 60h |
| 51 | 6.1.1 | Elaboración de diagramas unifilares y esquemáticos eléctricos | 4d | 2026-10-24 | 2026-10-28 | 48 | 2026-10-24 | 2026-10-28 | 4d | 1d | 0d | Angel Ongay | 24h |
| 52 | 6.1.2 | Elaboración del diagrama esquemático neumático y distribución de presiones de trabajo | 2d | 2026-10-24 | 2026-10-26 | 40 | 2026-10-24 | 2026-10-26 | 2d | 5d |  | Angel Ongay | 12h |
| 53 | 6.2 | **Formalización de la Arquitectura de Control** | 5d | 2026-10-28 | 2026-11-03 |  | 2026-10-28 | 2026-11-03 | 5d | 1d |  | Angel Ongay | 60h |
| 54 | 6.2.1 | Construcción y formalización de la Matriz Maestra de I/O | 3d | 2026-10-28 | 2026-10-31 | 51 | 2026-10-28 | 2026-10-31 | 3d | 1d | 0d | Angel Ongay | 18h |
| 55 | 6.2.2 | Modelado de secuencias de operación mediante GRAFCET | 2d | 2026-10-31 | 2026-11-03 | 54 | 2026-10-31 | 2026-11-03 | 2d | 1d |  | Angel Ongay | 12h |
| 56 | 6.3 | **Gestión de Materiales y Reintegración Física** | 10d | 2026-10-24 | 2026-11-04 |  | 2026-10-24 | 2026-11-04 | 10d | 0d |  | Angel Ongay | 120h |
| 57 | 6.3.1 | Requisición técnica y seguimiento de compra de componentes faltantes | 3d | 2026-10-24 | 2026-10-27 | 40, 45 | 2026-10-24 | 2026-10-27 | 3d | 0d |  | Angel Ongay | 18h |
| 58 | 6.3.2 | Montaje mecánico de herramentales rehabilitados, pistones y sensores en el marco de la celda | 4d | 2026-10-27 | 2026-10-31 | 57 | 2026-10-27 | 2026-10-31 | 4d | 0d |  | Angel Ongay | 24h |
| 59 | 6.3.3 | Conexión y peinado de cableado y mangueras con canalización industrial y etiquetado normado | 3d | 2026-10-31 | 2026-11-04 | 50, 58 | 2026-10-31 | 2026-11-04 | 3d | 0d |  | Angel Ongay | 18h |
| 60 | 7 | **Fase 4** | 17d | 2026-11-04 | 2026-11-21 | 24, 49 | 2026-11-04 | 2026-11-21 | 17d | 0d |  | Angel Ongay | 342h |
| 61 | 7.1 | **Calibración Cinemática Absoluta de Manipuladores** | 3d | 2026-11-04 | 2026-11-07 |  | 2026-11-04 | 2026-11-07 | 3d | 2d |  | Angel Ongay | 36h |
| 62 | 7.1.1 | Montaje de jigs o pernos de calibración mecánica en ejes | 1d | 2026-11-04 | 2026-11-05 | 58 | 2026-11-04 | 2026-11-05 | 1d | 2d | 0d | Angel Ongay | 6h |
| 63 | 7.1.2 | Ejecución del procedimiento oficial de mastering y reseteo de resolvers | 2d | 2026-11-05 | 2026-11-07 | 62 | 2026-11-05 | 2026-11-07 | 2d | 2d |  | Angel Ongay | 12h |
| 64 | 7.2 | **Migración y Adaptación de Código desde el Banco de Pruebas** | 11d | 2026-11-04 | 2026-11-14 |  | 2026-11-04 | 2026-11-14 | 11d | 0d |  | Angel Ongay | 132h |
| 65 | 7.2.1 | Adaptación del código al entorno | 3d | 2026-11-04 | 2026-11-07 | 25 | 2026-11-04 | 2026-11-07 | 3d | 0d |  | Angel Ongay | 18h |
| 66 | 7.2.2 | Enlace de variables lógicas con las direcciones | 2d | 2026-11-07 | 2026-11-09 | 65, 54 | 2026-11-07 | 2026-11-09 | 2d | 0d |  | Angel Ongay | 12h |
| 67 | 7.2.3 | Enseñanza y corrección de puntos de trayectoria finales | 4d | 2026-11-09 | 2026-11-13 | 66, 63 | 2026-11-09 | 2026-11-13 | 4d | 0d |  | Angel Ongay | 24h |
| 68 | 7.2.4 | Configuración de zonas de interferencia por software | 2d | 2026-11-13 | 2026-11-14 | 67 | 2026-11-13 | 2026-11-14 | 2d | 0d |  | Angel Ongay | 12h |
| 69 | 7.3 | **Pruebas de Integración y Movimiento Funcional en Sitio** | 6d | 2026-11-14 | 2026-11-21 |  | 2026-11-14 | 2026-11-21 | 6d | 0d |  | Angel Ongay | 72h |
| 70 | 7.3.1 | Ensayos cinemáticos manuales paso a paso | 3d | 2026-11-14 | 2026-11-19 | 68 | 2026-11-14 | 2026-11-19 | 3d | 0d |  | Angel Ongay | 18h |
| 71 | 7.3.2 | Pruebas cinemáticas en vacío en modo continuo automático a baja velocidad | 3d | 2026-11-19 | 2026-11-21 | 70 | 2026-11-19 | 2026-11-21 | 3d | 0d |  | Angel Ongay | 18h |
| 72 | 8 | **Fase 5** | 13d | 2026-11-21 | 2026-12-04 | 24, 60 | 2026-11-21 | 2026-12-04 | 13d | 0d |  | Angel Ongay | 240h |
| 73 | 8.1 | **Pruebas de Validación y Confiabilidad en Producción** | 7d | 2026-11-21 | 2026-11-28 |  | 2026-11-21 | 2026-11-28 | 7d | 0d |  | Angel Ongay | 84h |
| 74 | 8.1.1 | Corrida operativa continua de confiabilidad | 3d | 2026-11-21 | 2026-11-25 | 71 | 2026-11-21 | 2026-11-25 | 3d | 0d |  | Angel Ongay | 18h |
| 75 | 8.1.2 | Cronometraje y análisis de tiempos de movimientos | 2d | 2026-11-25 | 2026-11-27 | 74 | 2026-11-25 | 2026-11-27 | 2d | 0d |  | Angel Ongay | 12h |
| 76 | 8.1.3 | Ajuste fino de parámetros cinemáticos | 2d | 2026-11-27 | 2026-11-28 | 75 | 2026-11-27 | 2026-11-28 | 2d | 0d |  | Angel Ongay | 12h |

| ID | WBS | Task | Type | Duration | Start | Finish | Predecessors | Baseline start | Baseline finish | Baseline duration | Total slack | Free slack | Resources | Work |
| --- | --- | --- | --- | --- | --- | --- | --- | --- | --- | --- | --- | --- | --- | --- |
| 77 | 8.2 | **Transferencia Tecnológica y Protocolos de Recuperación** |  | 4d | 2026-11-28 | 2026-12-03 |  | 2026-11-28 | 2026-12-03 | 4d | 0d |  | Angel Ongay | 54h |
| 78 | 8.2.1 | Extracción y generación de respaldos |  | 1d | 2026-11-28 | 2026-11-30 | 76 | 2026-11-28 | 2026-11-30 | 1d | 3d | 0d | Angel Ongay | 6h |
| 79 | 8.2.2 | Preparación de medio de almacenamiento físico | milestone | 0d | 2026-11-30 | 2026-11-30 | 78 | 2026-11-30 | 2026-11-30 | 0d | 3d |  | Angel Ongay |  |
| 80 | 8.2.3 | Elaboración del Manual Técnico de Operación, Mantenimiento Preventivo y Procedimiento de Recuperación ante Fallos |  | 4d | 2026-11-28 | 2026-12-03 | 76 | 2026-11-28 | 2026-12-03 | 4d | 0d |  | Angel Ongay | 24h |
| 81 | 8.3 | **Cierre Operativo de Prácticas Profesionales** |  | 2d | 2026-12-03 | 2026-12-04 |  | 2026-12-03 | 2026-12-04 | 2d | 0d |  | Angel Ongay | 24h |
| 82 | 8.3.1 | Entrega de carpeta técnica completa de la celda |  | 2d | 2026-12-03 | 2026-12-04 | 77 | 2026-12-03 | 2026-12-04 | 2d | 0d |  | Angel Ongay | 12h |
| 83 | 8.3.2 | Firma de acta de entrega-recepción y comisionamiento con el departamento de ingeniería | milestone | 0d | 2026-12-04 | 2026-12-04 | 82 | 2026-12-04 | 2026-12-04 | 0d | 0d |  | Angel Ongay |  |
| 84 | 9 | Fin | milestone | 0d | 2026-12-04 | 2026-12-04 | 72 | 2026-12-04 | 2026-12-04 | 0d | 0d |  | Angel Ongay |  |
